Schedule from GanttProject, 2017-07-04 to 2019-12-31.
INRS-ETE
Holidays every year on 01-01, 06-24, 07-01, 12-25

## Calendars

- Project calendar: Mon-Fri working; Sat-Sun off. Exceptions (off unless hours are given): 2017-09-04 (Labour Day), 2017-10-09 (Thanksgiving).

## Schedule

| ID | WBS | Task | Type | Duration | Start | Finish | Predecessors | Complete |
| --- | --- | --- | --- | --- | --- | --- | --- | --- |
| 1 | 1 | **Volet: opération** |  | 80d | 2017-09-18 | 2018-01-10 |  | 32% |
| 2 | 1.1 | Réorganisation du répertoire rsesq-data |  | 1d | 2017-10-23 | 2017-10-23 |  | 100% |
| 3 | 1.2 | Version 1.0 des outils pour la collecte et mise à jour des données complétés | milestone | 0d | 2017-11-15 | 2017-11-15 |  |  |
| 4 | 1.3 | **Données climatiques** |  | 67d | 2017-09-18 | 2017-12-20 |  | 8% |
| 5 | 1.3.1 | **Production d'une première version des données traitées** |  | 4d | 2017-09-18 | 2017-09-21 |  | 100% |
| 6 | 1.3.1.1 | Télécharger les donnnées |  | 1d | 2017-09-18 | 2017-09-18 |  | 100% |
| 7 | 1.3.1.2 | Combler les données manquantes |  | 3d | 2017-09-19 | 2017-09-21 | 6 | 100% |
| 8 | 1.3.2 | **Améliorer l'outil pour télécharger les données météo** |  | 15d | 2017-10-23 | 2017-11-10 |  |  |
| 9 | 1.3.2.1 | Modifier l'outil de recherche des stations dans GWHAT |  | 3d | 2017-10-23 | 2017-10-25 |  |  |
| 10 | 1.3.2.2 | Compléter la doc de GWHAT |  | 2d | 2017-10-26 | 2017-10-27 | 9 |  |
| 11 | 1.3.2.3 | Évaluer les options pour la diffusion des travaux |  | 10d | 2017-10-30 | 2017-11-10 | 10 |  |
| 12 | 1.3.3 | **Améliorer l'estimation des données manquantes** |  | 25d | 2017-10-30 | 2017-12-01 |  |  |
| 13 | 1.3.3.1 | Réviser la sélection des stations |  | 1d | 2017-10-30 | 2017-10-30 |  |  |
| 14 | 1.3.3.2 | Lecture Pal et Prakash (2017) |  | 7d | 2017-10-30 | 2017-11-07 |  |  |
| 15 | 1.3.3.3 | Utiliser le machine learning pour combler les données |  | 5d | 2017-11-01 | 2017-11-07 |  |  |
| 16 | 1.3.3.4 | Compléter la doc de GWHAT |  | 10d | 2017-11-06 | 2017-11-17 |  |  |
| 17 | 1.3.3.5 | Écrire un article scientifique |  | 20d | 2017-11-06 | 2017-12-01 |  |  |
| 18 | 1.3.4 | Article: première version | milestone | 0d | 2017-12-01 | 2017-12-01 |  |  |
| 19 | 1.3.5 | Article: soumission revue | milestone | 0d | 2017-12-21 | 2017-12-21 |  |  |
| 20 | 1.4 | **Données piézométriques** |  | 75d | 2017-09-25 | 2018-01-10 |  | 50% |
| 21 | 1.4.1 | Créer une API |  | 3d | 2017-09-25 | 2017-09-27 |  | 100% |
| 22 | 1.4.2 | Télécharger les données |  | 2d | 2017-09-28 | 2017-09-29 | 21 | 100% |
| 23 | 1.4.3 | Inclure l'API dans GWHAT |  | 3d | 2018-01-04 | 2018-01-08 |  |  |
| 24 | 1.4.4 | Mettre à jour la doc. de GWHAT |  | 2d | 2018-01-09 | 2018-01-10 | 23 |  |

Notes:
- 6: Télécharger les données des stations qui ont été ciblées par l'UQAM. / Pour ce faire, le code de GWHAT sera modifé pour qu'il soit possible de lire une liste de stations météo et de télécharger automatiquement les données via un script python, sans avoir à utiliser l'interface graphique de GWHAT. L'objectif est que la mise à jour des données puisse être faite de façon automatique sur une base biannuelle.
- 7: Utiliser l'API de GWHAT pour combler automatiquement les données manquantes dans les jeux de données météo via un script python.
- 10: Générer la documentation en lien avec la collecte et l'estimation des valeurs manquantes dans les séries météo journalières dans GWHAT. / Pour ce faire, il est proposé de rédiger le tout à l'aide de Read the Doc: http://docs.readthedocs.io/en/latest/getting_started.html
- 16: Générer la documentation en lien avec la collecte et l'estimation des valeurs manquantes dans les séries météo journalières dans GWHAT. / Pour ce faire, il est proposé de rédiger le tout à l'aide de Read the Doc: http://docs.readthedocs.io/en/latest/getting_started.html
- 21: Créer une API permettant de lire la liste des stations piézométriques existantes sur le site du RSESQ du MDDELCC et de télécharger, formatter et sauvegarder les données dans un format csv.
- 22: Créer un script Python utilisant l'API ayant été produit à l'étape précédente pour télécharger les données de niveau d'eau automatiquement du site du MDDELCC afin de mettre à jours les données piézométriques du projet sur une base biannuelle.
- 23: Inclure les fonctionalités de l'API dans l'interface graphique de GWHAT.

| ID | WBS | Task | Type | Duration | Start | Finish | Predecessors | Complete |
| --- | --- | --- | --- | --- | --- | --- | --- | --- |
| 25 | 1.5 | **Données hydrométriques** |  | 5d | 2017-10-16 | 2017-10-20 |  | 83% |
| 26 | 1.5.1 | Tutoriel SQLite pour Python |  | 1d | 2017-10-16 | 2017-10-16 |  | 100% |
| 27 | 1.5.2 | Créer une API pour lire HYDAT |  | 2d | 2017-10-17 | 2017-10-18 | 26 | 100% |
| 28 | 1.5.3 | Créer une API pour lire CEHQ |  | 1d | 2017-10-19 | 2017-10-19 |  | 100% |
| 29 | 1.5.4 | Récupérer les données |  | 1d | 2017-10-20 | 2017-10-20 | 27, 28 | 100% |
| 30 | 1.5.5 | Outils pour récupérer les données hydrométriques complétés | milestone | 0d | 2017-10-20 | 2017-10-20 |  |  |
| 31 | 2 | **Volet: caractérisation** |  | 122d | 2017-07-04 | 2017-12-22 |  |  |
| 32 | 2.1 | Lecture circulaire 1217 de l'USGS |  | 50d | 2017-10-16 | 2017-12-22 |  |  |
| 33 | 2.2 | Fonction de réponse barométrique |  | 5d | 2017-12-04 | 2017-12-08 |  |  |
| 34 | 2.3 | Déf. des conditions autour des puits |  | 1d | 2017-09-11 | 2017-09-11 |  |  |
| 35 | 2.4 | Classement des puits et leurs fonctions |  | 1d | 2017-09-11 | 2017-09-11 |  |  |
| 36 | 2.5 | Livrable: grille de classement des puits | milestone | 0d | 2017-07-04 | 2017-07-04 |  |  |
| 37 | 3 | **Volet: exploitation** |  | 10d | 2017-08-28 | 2017-09-11 |  |  |
| 38 | 3.1 | Estimation de la recharge |  | 1d | 2017-09-11 | 2017-09-11 |  |  |
| 39 | 3.2 | Détection des changements dans les tendances |  | 1d | 2017-09-11 | 2017-09-11 |  |  |
| 40 | 3.3 | Prévision des niveau d'eau |  | 1d | 2017-09-11 | 2017-09-11 |  |  |
| 41 | 3.4 | Lien avec les cours d'eau |  | 1d | 2017-09-11 | 2017-09-11 |  |  |
| 42 | 3.5 | Graph: normales mensuelles |  | 1d | 2017-08-28 | 2017-08-28 |  |  |
| 43 | 4 | **Volet: rationalisation** |  | 10d | 2017-08-28 | 2017-09-11 |  |  |
| 44 | 4.1 | Graph: nbr. de stations versus le temps |  | 1d | 2017-08-28 | 2017-08-28 |  |  |
| 45 | 4.2 | Graph: localisation puits vs météo |  | 1d | 2017-09-11 | 2017-09-11 |  |  |
| 46 | 5 | **Volet: diffusion** |  | 593d | 2017-09-11 | 2019-12-30 |  |  |
| 47 | 5.1 | Données traitées en format csv |  | 1d | 2017-09-11 | 2017-09-11 |  |  |
| 48 | 5.2 | Graph: hydrogramme et météo |  | 1d | 2017-09-11 | 2017-09-11 |  |  |
| 49 | 5.3 | Rapport: fin de projet | milestone | 0d | 2019-12-31 | 2019-12-31 |  |  |

Notes:
- 26: L'objectif est d'acquérir les connaissances nécessaires pour mener à bien l'Issue #1. / Documentation de Python: / - [x] https://docs.python.org/2/library/sqlite3.html / Documentation de SQLite: / - [x] https://www.tutorialspoint.com/sqlite/sqlite_python.htm / Tutoriel de ZetCode: / - [x] http://zetcode.com/db/sqlitepythontutorial / Pandas: / - [x] http://pandas.pydata.org/pandas-docs/version/0.15.0/generated/pandas.read_sql.html / - [x] https://www.dataquest.io/blog/python-pandas-databases
- 27: Créer une API qui permettra de lire et récupérer les données de la base de données HYDAT dans le but de pouvoir mettre à jour les données hydrométriques utilisées pour le projet sur une base bi-annuelle.
- 29: Créer un script dans un IPython notebook faisant appel à l'API développée plus tôt pour récupérer automatiquement les données d'intérêts dans la base de données HYDAT.
- 30: Première version des outils permettant de récupérer et mettre à jour les données hydrométriques d'intérêts pour le projet. / Partage des données journalières hydrométriques avec les projet de l'UQAM et de l'ULaval.
- 33: Utiliser le logiciel KGS-BRF à partir de l'interface de GWHAT pour caractériser la fonction de réponse barométrique des puits à l'aide de données de niveau d'eau acquises aux 15 minutes. / https://github.com/jnsebgosselin/inrs-rsesq/issues/8
- 42: L'objectif est de pouvoir comparer visuellement où se situ le niveau actuel de l'eau souterraine par rapport aux années antécédentes. Pour se faire, il est proposé de s'inspirer de ce que produit l'USGS pour l'ensemble des puits de son Climate Response Network (voir image ci-dessous). Ces statistiques et graphiques doivent pouvoir être mis à jour de façon automatique chaque fois que de nouvelles données sont disponibles. / https://github.com/jnsebgosselin/inrs-rsesq/issues/7
- 44: Produire un graphique mettant en relation le nombre de stations piézométriques pour lesquelles des données sont disponibles au Québec en fonction du temps. / https://github.com/jnsebgosselin/inrs-rsesq/issues/6

| ID | WBS | Task | Duration | Start | Finish |
| --- | --- | --- | --- | --- | --- |
| 50 | 6 | **Formation continue** | 19d | 2017-10-02 | 2017-10-27 |
| 51 | 6.1 | Lecture Klove et al. (2014) | 5d | 2017-10-23 | 2017-10-27 |
| 52 | 6.2 | Lire le contenu du CEHQ | 1d | 2017-10-02 | 2017-10-02 |

Notes:
- 52: Survoler et lire tout ce qui est disponible sur: / https://www.cehq.gouv.qc.ca/hydrometrie
